# caArray

Schedule from MS Project, 2007-04-02 to 2007-11-13, A marks actual dates.
Project Schedule
5AM Solutions

## Calendars

- Standard: Mon-Fri 08:00-12:00, 13:00-17:00; Sat-Sun off.

## Resources

| Resource |
| --- |
| etavela |
| smatyas |
| bgendleman |
| rdaly |
| jpike |
| rsrinavasa |
| smiller |

## Schedule

| ID | WBS | Task | Duration | Start | Finish | Predecessors | Complete | Remaining | Baseline start | Baseline finish | Baseline duration | Total slack | Constraint | Deadline | Resources | Work | Actual work |
| --- | --- | --- | --- | --- | --- | --- | --- | --- | --- | --- | --- | --- | --- | --- | --- | --- | --- |
| 1 | 1 | **caArray 2.0** | 162d? | 2007-04-02 A | 2007-11-13 |  | 17% | 134.5d? | 2007-04-02 | 2007-05-21 | 35.75d? | 0d |  |  |  | 2191.28h | 877.48h |
| 2 | 1.1 | **Inception Phase** | 33.3d | 2007-04-02 A | 2007-05-17 |  | 99% | 0.21d | 2007-04-02 | 2007-05-15 | 32d | 128.7d |  |  |  | 879.28h | 877.48h |
| 3 | 1.1.1 | **Inception Iteration 1** | 33.3d | 2007-04-02 A | 2007-05-17 |  | 99% | 0.21d | 2007-04-02 | 2007-05-15 | 32d | 128.7d |  |  |  | 879.28h | 877.48h |
| 4 | 1 | **Project Management** | 31.25d | 2007-04-02 A | 2007-05-15 A |  | 100% |  | 2007-04-02 | 2007-05-15 | 31.25d |  |  |  |  | 20h | 20h |
| 5 | 1.1.1.1.1 | Plan the project | 12d | 2007-04-02 A | 2007-04-19 A |  | 100% |  | 2007-04-02 | 2007-04-19 | 12d |  | start no earlier than 2007-04-02 |  | rdaly [5%]; bgendleman | 20h | 20h |
| 6 | 1.4 | Plan Remainder of Initial Iteration | 1d | 2007-04-19 A | 2007-04-19 A |  | 100% |  | 2007-04-19 | 2007-04-19 | 1d |  | start no earlier than 2007-04-19 |  |  |  |  |
| 7 | 1.8 | Plan for Next Iteration | 5d | 2007-05-07 A | 2007-05-11 A |  | 100% |  | 2007-05-07 | 2007-05-11 | 5d |  |  |  |  |  |  |
| 8 | 1.1.1.1.4 | **Finalize Deliverables** | 31.25d | 2007-04-02 A | 2007-05-15 A |  | 100% |  | 2007-04-02 | 2007-05-15 | 31.25d |  |  |  |  |  |  |
| 9 | 1.1.1.1.4.1 | March Status Report | 2h | 2007-04-16 A | 2007-04-16 A |  | 100% |  | 2007-04-16 | 2007-04-16 | 2h |  | start no earlier than 2007-04-16 | 2007-04-18 |  |  |  |
| 10 | 1.1.1.1.4.2 | April Status Report | 2h | 2007-05-15 A | 2007-05-15 A |  | 100% |  | 2007-05-15 | 2007-05-15 | 2h |  | start no earlier than 2007-05-15 | 2007-05-15 |  |  |  |
| 11 | 1.1.1.1.4.3 | Release Risk List | 2h | 2007-04-02 A | 2007-04-02 A |  | 100% |  | 2007-04-02 | 2007-04-02 | 2h |  |  | 2007-05-15 |  |  |  |
| 12 | 3 | **Requirements** | 30.5d | 2007-04-02 A | 2007-05-14 A |  | 100% |  | 2007-04-02 | 2007-05-14 | 30.35d |  |  |  |  | 160.6h | 160.6h |
| 13 | 3.1 | Define the Preliminary Vision | 5d | 2007-04-23 A | 2007-05-04 A | 5SS, 14FF | 100% |  | 2007-04-23 | 2007-05-04 | 5d |  | start no earlier than 1999-05-04 |  |  |  |  |
| 14 | 3.2 | **Elicit Stakeholder Needs** | 22.4d | 2007-04-04 A | 2007-05-04 A | 5SS | 100% |  | 2007-04-04 | 2007-05-04 | 22.75d |  |  |  |  | 45h | 45h |
| 15 | 1.1.1.2.2.1 | Live Meeting with NCICB Stakeholders | 4.38d | 2007-04-04 A | 2007-04-12 A |  | 100% |  | 2007-04-04 | 2007-04-11 | 4.38d |  | start no earlier than 2007-04-04 |  | bgendleman; rdaly; etavela [25%] | 30h | 30h |
| 16 | 1.1.1.2.2.2 | Teleconference with Columbia - Aris | 1h | 2007-04-09 A | 2007-04-09 A | 15 | 100% |  | 2007-04-09 | 2007-04-09 | 1h |  |  |  | bgendleman | 1h | 1h |
| 17 | 1.1.1.2.2.3 | Teleconference with Northwestern | 2h | 2007-04-20 A | 2007-04-20 A |  | 100% |  | 2007-04-20 | 2007-04-20 | 2h |  | start no earlier than 2007-04-20 |  | bgendleman | 2h | 2h |
| 18 | 1.1.1.2.2.4 | Live Meeting with Georgetown | 4h | 2007-04-23 A | 2007-04-23 A | 17 | 100% |  | 2007-04-27 | 2007-04-27 | 4h |  | start no earlier than 2007-04-23 |  | bgendleman | 4h | 4h |
| 19 | 1.1.1.2.2.5 | Live Meeting with Thomas Jefferson | 4h | 2007-04-27 A | 2007-04-27 A | 18 | 100% |  | 2007-04-27 | 2007-05-04 | 4h |  | start no earlier than 2007-04-26 |  | bgendleman | 4h | 4h |
| 20 | 1.1.1.2.2.6 | Live Meeting with U Pitt | 4h | 2007-05-03 A | 2007-05-04 A | 19 | 100% |  | 2007-05-04 | 2007-05-04 | 4h |  | start no earlier than 2007-04-30 |  | bgendleman | 4h | 4h |
| 21 | 3.3 | Identify and Describe Use Cases | 4d | 2007-04-18 A | 2007-04-23 A |  | 100% |  | 2007-04-18 | 2007-04-23 | 4d |  | finish no earlier than 2007-04-20 |  | bgendleman; rdaly | 56h | 56h |
| 22 | 3.5 | Refine the System Definition | 6.35d | 2007-04-24 A | 2007-05-04 A | 6, 21 | 100% |  | 2007-04-24 | 2007-05-10 | 6.25d |  | start no earlier than 2007-04-18 |  | bgendleman; etavela [10%] | 20h | 20h |
| 23 | 1.1.1.2.5 | **Implement Requirement and Test Traceability** | 3.25d | 2007-04-16 A | 2007-04-19 A |  | 100% |  | 2007-04-16 | 2007-04-20 | 4.6d |  |  |  |  | 3.6h | 3.6h |
| 24 | 1.1.1.2.5.1 | Determine Approach | 2.25d | 2007-04-16 A | 2007-04-19 A |  | 100% |  | 2007-04-16 | 2007-04-20 | 2.25d |  | start no earlier than 2007-04-16 |  | bgendleman [20%]; etavela [20%] | 3.6h | 3.6h |
| 25 | 3.6 | Manage Changing Requirements | 1d | 2007-04-27 A | 2007-05-04 A | 13SS | 100% |  | 2007-04-27 | 2007-05-04 | 1d |  | start no earlier than 2007-04-25 |  | bgendleman | 8h | 8h |

Notes:
- 15: expect follow up with Suba, Mervi and Xiaopeng as requirements contributors

| ID | WBS | Task | Duration | Start | Finish | Predecessors | Complete | Remaining | Baseline start | Baseline finish | Baseline duration | Total slack | Constraint | Deadline | Resources | Work | Actual work |
| --- | --- | --- | --- | --- | --- | --- | --- | --- | --- | --- | --- | --- | --- | --- | --- | --- | --- |
| 26 | 1.1.1.2.7 | **Finalize Deliverables** | 30.5d | 2007-04-02 A | 2007-05-14 A |  | 100% |  | 2007-04-02 | 2007-05-14 | 30.35d |  |  |  |  | 28h | 28h |
| 27 | 1.1.1.2.7.1 | Requirements Management Plan | 0.25d | 2007-04-02 A | 2007-04-09 A |  | 100% |  | 2007-04-02 | 2007-04-09 | 0.25d |  |  |  | bgendleman | 2h | 2h |
| 28 | 1.1.1.2.7.2 | Finalize Questionnaire | 0.25d | 2007-04-02 A | 2007-04-02 A |  | 100% |  | 2007-04-02 | 2007-04-02 | 0.25d |  |  |  | bgendleman | 2h | 2h |
| 29 | 1.1.1.2.7.3 | Draft Vision Document | 1d | 2007-04-30 A | 2007-05-11 A | 20, 13 | 100% |  | 2007-04-30 | 2007-05-11 | 1d |  |  |  | bgendleman | 8h | 8h |
| 30 | 1.1.1.2.7.4 | Draft Supplementary Spec | 1d | 2007-05-11 A | 2007-05-14 A | 29 | 100% |  | 2007-05-11 | 2007-05-14 | 1d |  |  |  | bgendleman | 8h | 8h |
| 31 | 1.1.1.2.7.5 | Draft Use Case Model | 1d | 2007-04-27 A | 2007-05-03 A | 21 | 100% |  | 2007-04-27 | 2007-05-04 | 1d |  |  | 2007-05-04 | bgendleman | 8h | 8h |
| 32 | 4 | **Analysis and Design** | 33.3d | 2007-04-02 A | 2007-05-17 |  | 95% | 1.74d | 2007-04-02 | 2007-04-20 | 15d | 128.7d |  |  |  | 111.68h | 109.88h |
| 33 | 4.1 | Use Case Analysis (Manage Protocols) | 1d | 2007-04-05 A | 2007-04-05 A |  | 100% |  | 2007-04-05 | 2007-04-05 | 1d |  | start no earlier than 2007-04-05 |  | etavela | 8h | 8h |
| 34 | 1.1.1.3.2 | Use Case Design (Manage Protocols) | 1d | 2007-04-06 A | 2007-04-06 A | 33 | 100% |  | 2007-04-06 | 2007-04-06 | 1d |  |  |  | etavela | 8h | 8h |
| 35 | 1.1.1.3.3 | Vocabulary Management Subsystem Design | 4.95d | 2007-04-04 A | 2007-04-12 A |  | 100% |  | 2007-04-04 | 2007-04-12 | 4.95d |  | start no earlier than 2007-04-04 |  | etavela [10%]; jpike | 26.08h | 26.08h |
| 36 | 1.1.1.3.4 | Data Access Subsystem Design | 2.75d | 2007-04-09 A | 2007-04-13 A |  | 100% |  | 2007-04-09 | 2007-04-20 | 3d |  | start no earlier than 2007-04-09 | 2007-04-20 | rsrinavasa; etavela [25%] | 18h | 18h |
| 37 | 1.1.1.3.5 | MAGE-OM Façade | 4.5d | 2007-04-02 A | 2007-04-10 |  | 80% | 0.9d | 2007-04-02 | 2007-04-10 | 4.5d | 155d |  |  | rsrinavasa; etavela [25%] | 30h | 28.2h |
| 38 | 1.1.1.3.6 | **Finalize Deliverables** | 3.3d | 2007-05-14 A | 2007-05-17 A |  | 100% |  | 2007-04-11 | 2007-04-19 | 6d |  |  |  |  | 21.6h | 21.6h |
| 39 | 1.1.1.3.6.1 | Release Candidate Software Architecture Document | 3d | 2007-05-14 A | 2007-05-17 A |  | 100% |  | 2007-04-11 | 2007-04-19 | 5d |  | start no earlier than 2007-05-14 |  | etavela [90%] | 21.6h | 21.6h |
| 40 | 1.1.1.4 | **Implementation** | 32d | 2007-04-02 A | 2007-05-15 A |  | 100% |  | 2007-04-02 | 2007-05-15 | 32d |  |  |  |  | 393.2h | 393.2h |
| 41 | 1.1.1.4.1 | Structure the Implementation Model | 1.5d | 2007-04-02 A | 2007-04-04 A |  | 100% |  | 2007-04-02 | 2007-04-04 | 1.5d |  | start no earlier than 2007-04-09 | 2007-04-06 | etavela | 12h | 12h |
| 42 | 1.1.1.4.2 | Implement Vocabulary Subsystem | 3w | 2007-04-13 A | 2007-05-08 A | 41, 35 | 100% |  | 2007-04-12 | 2007-05-08 | 3w |  |  |  | jpike | 120h | 120h |
| 43 | 1.1.1.4.3 | Implement MAGE-OM | 2w | 2007-04-10 A | 2007-04-27 A | 41, 37 | 100% |  | 2007-04-10 | 2007-04-30 | 2w |  |  |  | rsrinavasa | 80h | 80h |
| 44 | 1.1.1.4.4 | Implement Data Access | 3d | 2007-04-16 A | 2007-04-30 A | 41 | 100% |  | 2007-04-16 | 2007-04-24 | 3d |  | start no earlier than 2007-04-16 | 2007-04-20 | rsrinavasa | 24h | 24h |
| 45 | 1.1.1.4.5 | Implement MAGE-OM Façade | 1.7w | 2007-04-18 A | 2007-05-15 A |  | 100% |  | 2007-04-19 | 2007-05-15 | 1.7w |  | start no earlier than 2007-04-18 |  | etavela [25%]; rsrinavasa | 50h | 50h |
| 46 | 1.1.1.4.6 | Implement Protocol Management | 2.2w | 2007-04-16 A | 2007-05-09 A | 34 | 100% |  | 2007-04-16 | 2007-05-09 | 2.1w |  | start no earlier than 2007-04-16 |  | jpike; rsrinavasa; etavela [10%] | 52h | 52h |
| 47 | 1.1.1.4.7 | Implement Protocol User Interface (minimal) | 3d | 2007-05-09 A | 2007-05-14 A | 46 | 100% |  | 2007-05-09 | 2007-05-14 | 3d |  |  |  | rsrinavasa; jpike | 48h | 48h |
| 48 | 1.1.1.4.8 | **Finalize Deliverables** | 1d | 2007-05-14 A | 2007-05-15 A |  | 100% |  | 2007-05-14 | 2007-05-15 | 1d |  |  |  |  | 7.2h | 7.2h |
| 49 | 1.1.1.4.8.1 | Release Architectural Prototype | 1d | 2007-05-14 A | 2007-05-15 A | 47 | 100% |  | 2007-05-14 | 2007-05-15 | 1d |  |  |  | etavela [90%] | 7.2h | 7.2h |

Notes:
- 43: 2 weeks anticipates that code generation will be a part of it

| ID | WBS | Task | Type | Duration | Start | Finish | Predecessors | Complete | Baseline start | Baseline finish | Baseline duration | Constraint | Deadline | Resources | Work | Actual work |
| --- | --- | --- | --- | --- | --- | --- | --- | --- | --- | --- | --- | --- | --- | --- | --- | --- |
| 50 | 5 | **Test** |  | 31.82d | 2007-04-02 A | 2007-05-15 A |  | 100% | 2007-04-02 | 2007-05-15 | 31.07d |  |  |  | 27.8h | 27.8h |
| 51 | 1.1.1.5.1 | Meet with Indepdent QA |  | 2h | 2007-04-09 A | 2007-04-09 A |  | 100% | 2007-04-09 | 2007-04-09 | 2h | finish no later than 2007-04-27 | 2007-04-27 | bgendleman [80%] | 1.6h | 1.6h |
| 52 | 1.1.1.5.2 | Implement System Tests Against Protocol Management | milestone | 0d | 2007-05-15 A | 2007-05-15 A | 49 | 100% | 2007-05-15 | 2007-05-15 | 0d | start no earlier than 2007-05-14 |  | smatyas |  |  |
| 53 | 5.1 | Analyze and Identify Test Approach |  | 1d | 2007-04-02 A | 2007-04-27 A |  | 100% | 2007-04-02 | 2007-04-27 | 1d |  |  | smatyas; etavela; bgendleman | 8h | 8h |
| 54 | 1.1.1.5.4 | **Finalize Deliverables** |  | 4.25d | 2007-04-27 A | 2007-05-03 A |  | 100% | 2007-04-27 | 2007-05-04 | 5d |  |  |  | 18.2h | 18.2h |
| 55 | 1.1.1.5.4.1 | Release Test Plan |  | 2.6d | 2007-04-27 A | 2007-05-03 A | 53 | 100% | 2007-04-27 | 2007-05-04 | 2.5d |  |  | smatyas; bgendleman [25%]; etavela [5%] | 18.2h | 18.2h |
| 56 | 6 | **Environment** |  | 30.25d | 2007-04-02 A | 2007-05-14 A |  | 100% | 2007-04-02 | 2007-05-14 | 30.25d |  |  |  | 136h | 136h |
| 57 | 1.1.1.6.1 | Launch Development Process |  | 6h | 2007-04-09 A | 2007-04-18 A |  | 100% | 2007-04-09 | 2007-04-18 | 6h | start no earlier than 2007-04-09 |  | smatyas; jpike; smiller; rsrinavasa | 12h | 12h |
| 58 | 1.1.1.6.2 | **Set Up Tools** |  | 20d | 2007-04-02 A | 2007-04-27 A |  | 100% | 2007-04-02 | 2007-04-27 | 20d |  |  |  | 76h | 76h |
| 59 | 1.1.1.6.2.1 | Set Up Maven |  | 4d | 2007-04-02 A | 2007-04-09 A |  | 100% | 2007-04-02 | 2007-04-09 | 4d | start no earlier than 2007-04-02 |  | smatyas [50%]; smiller [50%] | 16h | 16h |
| 60 | 1.1.1.6.2.2 | Set Up Continuous Integration |  | 1d | 2007-04-16 A | 2007-04-16 A |  | 100% | 2007-04-16 | 2007-04-16 | 1d | start no earlier than 2007-04-16 |  | smatyas | 8h | 8h |
| 61 | 1.1.1.6.2.3 | Set Up Eclipse |  | 2d | 2007-04-03 A | 2007-04-06 A |  | 100% | 2007-04-03 | 2007-04-06 | 2d | start no earlier than 2007-04-03 |  | jpike; smiller [50%] | 12h | 12h |
| 62 | 1.1.1.6.2.4 | Set Up Selenium |  | 2d | 2007-04-26 A | 2007-04-27 A | 60 | 100% | 2007-04-26 | 2007-04-27 | 2d | finish no earlier than 2007-04-27 | 2007-04-27 | smatyas | 16h | 16h |
| 63 | 1.1.1.6.2.5 | Set Up Code Quality Tools |  | 2d | 2007-04-02 A | 2007-04-09 A |  | 100% | 2007-04-02 | 2007-04-09 | 2d |  |  | smatyas; etavela | 24h | 24h |
| 64 | 1.1.1.6.3 | **Finalize Deliverables** |  | 19.25d | 2007-04-17 A | 2007-05-14 A |  | 100% | 2007-04-19 | 2007-05-14 | 17.25d |  |  |  | 48h | 48h |
| 65 | 1.1.1.6.3.1 | Release Development Case |  | 0.25d | 2007-05-14 A | 2007-05-14 A |  | 100% | 2007-05-14 | 2007-05-14 | 0.25d | start no earlier than 2007-05-14 |  | etavela | 2h | 2h |
| 66 | 1.1.1.6.3.2 | Release Guidelines for the Project |  | 1.25d | 2007-04-20 A | 2007-04-23 A |  | 100% | 2007-04-20 | 2007-04-23 | 1.25d | start no earlier than 2007-04-16 |  | etavela | 10h | 10h |
| 67 | 1.1.1.6.3.3 | Release Templates for the Project |  | 5.5d | 2007-04-17 A | 2007-04-30 A |  | 100% | 2007-04-19 | 2007-04-30 | 5.55d | finish no earlier than 2007-04-13 |  | smiller [50%]; etavela | 36h | 36h |
| 68 | 7 | **Configuration & Change Management** |  | 31.25d | 2007-04-02 A | 2007-05-15 A |  | 100% | 2007-04-02 | 2007-05-15 | 31.25d |  |  |  | 30h | 30h |
| 69 | 7.1 | Plan Project Configuration and Change Control |  | 0.5d | 2007-04-20 A | 2007-04-20 A |  | 100% | 2007-04-20 | 2007-04-24 | 0.55d | finish no earlier than 2007-04-20 | 2007-05-15 | etavela; bgendleman | 8h | 8h |
| 70 | 1.1.1.7.2 | **Finalize Deliverables** |  | 31.25d | 2007-04-02 A | 2007-05-15 A |  | 100% | 2007-04-02 | 2007-05-15 | 31.25d |  |  |  | 22h | 22h |
| 71 | 1.1.1.7.2.1 | Release Configuration Management Plan |  | 0.75d | 2007-04-02 A | 2007-05-15 A |  | 100% | 2007-04-02 | 2007-05-15 | 0.75d |  |  | etavela; bgendleman | 6h | 6h |
| 72 | 1.1.1.7.2.2 | G-Forge Implementation of the Change Control Process |  | 2d | 2007-04-02 A | 2007-05-14 A |  | 100% | 2007-04-02 | 2007-05-14 | 2d |  |  | bgendleman | 16h | 16h |
| 73 | 1.1.1.8 | Inception Complete | milestone | 0d | 2007-05-15 A | 2007-05-15 A | 4, 5, 26, 8, 54, 64, 70 | 100% | 2007-05-15 | 2007-05-15 | 0d | start no earlier than 2007-05-15 | 2007-05-15 |  |  |  |

Notes:
- 59: Instructions documented on Wiki
- 61: Instructions documented on Wiki
- 63: Cobertura, PMD, CheckStyle, Simian, JUnit
- 66: UML, Java, JSP/HTML
- 67: Java, JSP/HTML / Use Case Summary / Use Case Specification / Vision / Traceability Matrix - will attempt to do in EA

| ID | WBS | Task | Duration | Start | Finish | Predecessors | Baseline start | Baseline finish | Baseline duration | Total slack | Free slack | Constraint | Deadline | Resources | Work |
| --- | --- | --- | --- | --- | --- | --- | --- | --- | --- | --- | --- | --- | --- | --- | --- |
| 74 | 1.2 | **Elaboration Phase** | 50.6d? | 2007-05-15 | 2007-07-24 | 73 | 2007-05-15 | 2007-05-17 | 2.5d? | -18.65d | 0d |  |  |  | 1312h |
| 75 | 1.2.1 | **Elaboration - Iteration 1** | 31.6d | 2007-05-15 | 2007-06-27 |  | 2007-05-15 | 2007-05-17 | 2.5d | -18.65d | 0d |  |  |  | 1025.6h |
| 76 | 1 | **Project Management** | 24d | 2007-05-22 | 2007-06-22 | 73 | 2007-04-02 | 2007-05-15 | 31.25d | -23.25d | 0d |  |  |  | 48.8h |
| 77 | 1.2.1.1.1 | Inception Post Mortem | 1.7h | 2007-05-22 | 2007-05-22 |  | 2007-05-15 | 2007-05-17 | 20h | 45.79d |  | start no earlier than 2007-05-22 |  | smatyas; bgendleman [80%]; etavela [90%]; jpike; rsrinavasa | 8h |
| 78 | 1.4 | Plan Remainder of Initial Iteration | 1d | 2007-06-07 | 2007-06-07 |  | 2007-04-19 | 2007-04-19 | 1d | 33d |  | start no earlier than 2007-06-07 |  | etavela [90%]; bgendleman [80%] | 13.6h |
| 79 | 1.2.1.1.3 | Weekly Status Meetings | 1.5d | 2007-05-23 | 2007-05-24 |  |  |  |  | 43.5d |  | start no earlier than 2007-05-23 |  | bgendleman [80%] | 9.6h |
| 80 | 1.8 | Plan for Next Iteration | 1d | 2007-06-22 | 2007-06-22 | 84FF | 2007-05-07 | 2007-05-11 | 5d | 22d |  | start no earlier than 2007-06-20 |  | bgendleman [80%]; etavela [90%] | 13.6h |
| 81 | 1.2.1.1.5 | **Finalize Deliverables** | 22d | 2007-05-24 | 2007-06-22 |  | 2007-04-02 | 2007-05-15 | 31.25d | -25.25d | 0d |  |  |  | 4h |
| 82 | 1.2.1.1.5.1 | May Status Report | 2h | 2007-06-08 | 2007-06-08 |  | 2007-04-16 | 2007-04-16 | 2h | -36.25d | 0d | start no earlier than 2007-06-08 | 2007-04-18 | bgendleman | 2h |
| 83 | 1.2.1.1.5.2 | Update Risk List | 2h | 2007-05-24 | 2007-05-24 |  | 2007-04-02 | 2007-04-02 | 2h | -6.25d | 0d | start no earlier than 2007-05-24 | 2007-05-15 | bgendleman | 2h |
| 84 | 1.9 | Update Software Development Plan | 1d | 2007-06-22 | 2007-06-22 |  | 2007-05-11 | 2007-05-11 | 1d | 22d | 0d | start no earlier than 2007-06-22 |  |  |  |
| 85 | 1.2.1.2 | **Requirements** | 25d | 2007-05-22 | 2007-06-25 |  |  |  |  | 21d |  |  |  |  | 253.6h |
| 86 | 1.2.1.2.1 | Update Draft Documents | 3d | 2007-05-22 | 2007-05-24 |  |  |  |  | 42d | 0d | start no earlier than 2007-05-22 |  | bgendleman | 24h |
| 87 | 1.2.1.2.2 | Write Prioritized Use Cases | 10d | 2007-05-25 | 2007-06-07 |  |  |  |  | 19d | 0d | start no earlier than 2007-05-25 |  | bgendleman | 80h |
| 88 | 1.2.1.2.3 | Create Wireframes for targeted Ucs | 3d | 2007-06-08 | 2007-06-12 | 87 |  |  |  | 30d |  |  |  | bgendleman | 24h |
| 89 | 1.2.1.2.4 | Harmonize Models | 1d | 2007-05-24 | 2007-05-24 |  |  |  |  | 43d |  | start no earlier than 2007-05-24 |  | bgendleman [80%]; etavela [90%] | 13.6h |
| 90 | 1.2.1.2.5 | **Finalize Deliverables** | 22d | 2007-05-25 | 2007-06-25 |  |  |  |  | 21d |  |  |  |  | 112h |
| 91 | 1.2.1.2.5.1 | Finalize Vision | 1d | 2007-05-25 | 2007-05-25 | 86 |  |  |  | 42d |  |  |  | bgendleman | 8h |
| 92 | 1.2.1.2.5.2 | Finalize Supplemental Specification | 1d | 2007-05-25 | 2007-05-25 | 86 |  |  |  | 42d |  |  |  | bgendleman | 8h |
| 93 | 1.2.1.2.5.3 | UC Import Project Data | 1d | 2007-06-08 | 2007-06-08 | 87 |  |  |  | 19d | 0d |  |  | bgendleman | 8h |
| 94 | 1.2.1.2.5.4 | UC Sumbit Project Proposal | 1d | 2007-06-11 | 2007-06-11 | 93 |  |  |  | 21d | 0d |  |  | bgendleman | 8h |
| 95 | 1.2.1.2.5.5 | UC Report on Work Accomplished | 1d | 2007-06-12 | 2007-06-12 | 94 |  |  |  | 21d | 0d |  |  | bgendleman | 8h |
| 96 | 1.2.1.2.5.6 | UC Validate File for Submission | 1d | 2007-06-13 | 2007-06-13 | 95 |  |  |  | 21d | 0d |  |  | bgendleman | 8h |
| 97 | 1.2.1.2.5.7 | UC Download Project Data | 1d | 2007-06-14 | 2007-06-14 | 96 |  |  |  | 21d | 0d |  |  | bgendleman | 8h |
| 98 | 1.2.1.2.5.8 | UC Login | 1d | 2007-06-15 | 2007-06-15 | 97 |  |  |  | 21d | 0d |  |  | bgendleman | 8h |
| 99 | 1.2.1.2.5.9 | UC Manage Users | 1d | 2007-06-18 | 2007-06-18 | 98 |  |  |  | 21d | 0d |  |  | bgendleman | 8h |
| 100 | 1.2.1.2.5.10 | UC Manage Institutional Groups | 1d | 2007-06-19 | 2007-06-19 | 99 |  |  |  | 21d | 0d |  |  | bgendleman | 8h |
| 101 | 1.2.1.2.5.11 | UC Wireframes | 2d | 2007-06-20 | 2007-06-21 | 100 |  |  |  | 21d | 0d |  |  | bgendleman | 16h |
| 102 | 1.2.1.2.5.12 | Stylesheet Framework | 2d | 2007-06-22 | 2007-06-25 | 101 |  |  |  | 21d |  |  |  | bgendleman | 16h |

| ID | WBS | Task | Duration | Start | Finish | Predecessors | Total slack | Free slack | Constraint | Resources | Work |
| --- | --- | --- | --- | --- | --- | --- | --- | --- | --- | --- | --- |
| 103 | 1.2.1.3 | **Analysis and Design** | 10d | 2007-06-11 | 2007-06-22 |  | 19d |  |  |  | 240.8h |
| 104 | 1.2.1.3.1 | Targeted Use Case Analysis and Design | 5d | 2007-06-11 | 2007-06-15 | 93 | 19d | 0d |  | etavela [90%]; jpike; rsrinavasa | 116h |
| 105 | 1.2.1.3.2 | Grid Strategy | 5d | 2007-06-18 | 2007-06-22 | 104 | 22d |  |  | etavela [90%] | 36h |
| 106 | 1.2.1.3.3 | Parsing Strategy | 3d | 2007-06-18 | 2007-06-20 | 104 | 19d | 0d |  | etavela [90%] | 21.6h |
| 107 | 1.2.1.3.4 | Binary Storage | 3d | 2007-06-18 | 2007-06-20 | 104 | 19d | 0d |  | etavela [90%] | 21.6h |
| 108 | 1.2.1.3.5 | 1.6 Data Migration Strategy | 1.93d | 2007-06-18 | 2007-06-19 | 104 | 22.07d | 0d |  | etavela [90%]; smatyas [50%] | 21.6h |
| 109 | 1.2.1.3.6 | **Finalize Deliverables** | 3d | 2007-06-19 | 2007-06-22 |  | 22.07d |  |  |  | 24h |
| 110 | 1.2.1.3.6.1 | Update Software Architecture Document | 3d | 2007-06-19 | 2007-06-22 | 108 | 22.07d |  |  | etavela | 24h |
| 111 | 1.2.1.4 | **Implementation** | 31.6d | 2007-05-15 | 2007-06-27 |  | 19d |  |  |  | 7.2h |
| 112 | 1.2.1.4.1 | Implement UC Import Project Data | 5d | 2007-06-21 | 2007-06-27 | 106 | 19d |  |  |  |  |
| 113 | 1.2.1.4.2 | Implement UC Validate File For Submission | 5d | 2007-06-18 | 2007-06-22 | 104 | 22d |  |  |  |  |
| 114 | 1.2.1.4.3 | Implement UC Download Project Data | 5d | 2007-06-21 | 2007-06-27 | 107 | 19d |  |  |  |  |
| 115 | 1.2.1.4.4 | Implement Login | 2d | 2007-06-01 | 2007-06-04 |  | 31d | 0d | start no earlier than 2007-06-01 |  |  |
| 116 | 1.2.1.4.5 | Implement Manage Users | 5d | 2007-06-05 | 2007-06-11 | 115 | 31d |  |  |  |  |
| 117 | 1.2.1.4.6 | **Finalize Deliverables** | 0.64d | 2007-05-15 | 2007-05-16 |  | 49.96d |  |  |  | 7.2h |
| 118 | 1.2.1.4.6.1 | Release Final E1 Development Build | 0.64d | 2007-05-15 | 2007-05-16 |  | 49.96d |  |  | etavela [90%]; smatyas [50%] | 7.2h |
| 119 | 1.2.1.5 | **Test** | 6.91d | 2007-06-18 | 2007-06-26 |  | 20.09d |  |  |  | 135.2h |
| 120 | 1.2.1.5.1 | Create Junit Test for targeted UC's | 3d | 2007-06-18 | 2007-06-20 | 104 | 20.09d | 0d |  | jpike; rsrinavasa; etavela [90%] | 69.6h |
| 121 | 1.2.1.5.2 | Create Selenium Tests for targeted Ucs | 2d | 2007-06-21 | 2007-06-22 | 120 | 21d | 0d |  | smatyas [50%] | 8h |
| 122 | 1.2.1.5.3 | Incorporate Test Cases into Gforge | 1d | 2007-06-25 | 2007-06-25 | 121 | 21d |  |  | bgendleman | 8h |
| 123 | 1.2.1.5.4 | Manage Test Assets | 1.91d | 2007-06-21 | 2007-06-22 | 120 | 20.09d | 0d |  | smatyas [50%]; etavela [90%]; bgendleman [80%] | 33.6h |
| 124 | 1.2.1.5.5 | **Finalize Deliverables** | 2d | 2007-06-22 | 2007-06-26 |  | 20.09d |  |  |  | 16h |
| 125 | 1.2.1.5.5.1 | Release Test Plan | 2d | 2007-06-22 | 2007-06-26 | 123 | 20.09d |  |  | bgendleman | 16h |
| 126 | 1.2.1.6 | **Environment** | 1d | 2007-06-22 | 2007-06-25 |  | 21.09d |  |  |  |  |
| 127 | 1.2.1.6.1 | Integrate Test Suite into Gforge | 1d | 2007-06-22 | 2007-06-25 | 123 | 21.09d |  |  |  |  |

| ID | WBS | Task | Type | Duration | Start | Finish | Predecessors | Baseline start | Baseline finish | Baseline duration | Total slack | Free slack | Constraint | Resources | Work |
| --- | --- | --- | --- | --- | --- | --- | --- | --- | --- | --- | --- | --- | --- | --- | --- |
| 128 | 1.2.1.7 | **Configuration and Change Management** |  | 25d | 2007-05-22 | 2007-06-25 |  |  |  |  | 21d |  |  |  | 340h |
| 129 | 1.2.1.7.1 | Manage Gforge Content |  | 25d | 2007-05-22 | 2007-06-25 |  |  |  |  | 21d |  | start no earlier than 2007-05-22 | bgendleman [80%]; etavela [90%] | 340h |
| 130 | 1.2.1.8 | Elaboration 1 Complete | milestone | 0d | 2007-06-27 | 2007-06-27 |  |  |  |  | 0d |  | start no earlier than 2007-06-27 |  |  |
| 131 | 1.2.2 | **Elaboration - Iteration 2** |  | 20d? | 2007-06-27 | 2007-07-24 | 130 | 2007-05-15 | 2007-05-16 | 1d? | 0d |  |  |  | 286.4h |
| 132 | 1.2.2.1 | Project Management |  | 20d | 2007-06-27 | 2007-07-24 |  |  |  |  | 0d |  |  | bgendleman | 160h |
| 133 | 1.2.2.2 | E1 Post Mortem |  | 1d | 2007-06-27 | 2007-06-27 | 130 |  |  |  | 19d |  |  |  |  |
| 134 | 1.2.2.3 | **Requirements** |  | 10d? | 2007-06-27 | 2007-07-10 |  |  |  |  | 10d |  |  |  | 126.4h |
| 135 | 1.2.2.3.1 | Incorporate Stakeholder Feedback on Vision and Supp Spec |  | 2d | 2007-06-27 | 2007-06-28 |  |  |  |  | 15d | 0d |  | bgendleman | 16h |
| 136 | 1.2.2.3.2 | Incorporate Stakeholder Feedback on E1 Use Cases |  | 3d | 2007-06-29 | 2007-07-03 | 135 |  |  |  | 15d |  |  | bgendleman | 24h |
| 137 | 1.2.2.3.3 | Update Wireframes |  | 1d? | 2007-06-27 | 2007-06-27 |  |  |  |  | 19d |  |  |  |  |
| 138 | 1.2.2.3.4 | User Interface Design |  | 1d? | 2007-06-27 | 2007-06-27 |  |  |  |  | 19d |  |  | bgendleman [80%] | 6.4h |
| 139 | 1.2.2.3.5 | Detail E2 Use Cases |  | 10d | 2007-06-27 | 2007-07-10 |  |  |  |  | 10d |  |  | bgendleman | 80h |
| 140 | 1.2.2.4 | Analysis and Design |  | 20d | 2007-06-27 | 2007-07-24 |  |  |  |  | 0d |  |  |  |  |
| 141 | 1.2.2.5 | **Implementation** |  | 1d? | 2007-06-27 | 2007-06-27 |  |  |  |  | 19d |  |  |  |  |
| 142 | 1.2.2.5.1 | User Interface |  | 1d? | 2007-06-27 | 2007-06-27 |  |  |  |  | 19d |  |  |  |  |
| 143 | 1.2.2.6 | Test |  | 20d | 2007-06-27 | 2007-07-24 |  |  |  |  | 0d |  |  |  |  |
| 144 | 1.2.2.7 | Environment |  | 20d | 2007-06-27 | 2007-07-24 |  |  |  |  | 0d |  |  |  |  |
| 145 | 1.2.2.8 | Configuration and Change Management |  | 20d | 2007-06-27 | 2007-07-24 |  |  |  |  | 0d |  |  |  |  |
| 146 | 1.2.2.9 | Elaboration 2 Complete | milestone | 0d | 2007-07-24 | 2007-07-24 | 145 |  |  |  | 0d |  |  |  |  |
| 147 | 1.3 | **Construction Phase** |  | 40d | 2007-07-25 | 2007-09-18 | 74 | 2007-05-17 | 2007-05-18 | 1d? | 0d |  |  |  |  |
| 148 | 1.3.1 | **Construction - Iteration 1** |  | 20d | 2007-07-25 | 2007-08-21 |  | 2007-05-17 | 2007-05-18 | 1d? | 0d |  |  |  |  |
| 149 | 1.3.1.1 | Project Management |  | 20d | 2007-07-25 | 2007-08-21 |  |  |  |  | 20d |  |  |  |  |
| 150 | 1.3.1.2 | Requirements |  | 20d | 2007-07-25 | 2007-08-21 |  |  |  |  | 20d |  |  |  |  |
| 151 | 1.3.1.3 | Analysis and Design |  | 20d | 2007-07-25 | 2007-08-21 |  |  |  |  | 20d |  |  |  |  |
| 152 | 1.3.1.4 | Implementation |  | 20d | 2007-07-25 | 2007-08-21 |  |  |  |  | 20d |  |  |  |  |
| 153 | 1.3.1.5 | Test |  | 20d | 2007-07-25 | 2007-08-21 |  |  |  |  | 20d |  |  |  |  |
| 154 | 1.3.1.6 | Environment |  | 20d | 2007-07-25 | 2007-08-21 |  |  |  |  | 20d |  |  |  |  |
| 155 | 1.3.1.7 | Configuration and Change Management |  | 20d | 2007-07-25 | 2007-08-21 |  |  |  |  | 0d |  |  |  |  |
| 156 | 1.3.1.8 | Construction 1 Complete | milestone | 0d | 2007-08-21 | 2007-08-21 | 155 |  |  |  | 0d |  |  |  |  |

| ID | WBS | Task | Type | Duration | Start | Finish | Predecessors | Baseline start | Baseline finish | Baseline duration | Total slack |
| --- | --- | --- | --- | --- | --- | --- | --- | --- | --- | --- | --- |
| 157 | 1.3.2 | **Construction - Iteration 2** |  | 20d | 2007-08-21 | 2007-09-18 | 156 | 2007-05-17 | 2007-05-18 | 1d? | 0d |
| 158 | 1.3.2.1 | Project Management |  | 20d | 2007-08-22 | 2007-09-18 |  |  |  |  | 0d |
| 159 | 1.3.2.2 | Requirements |  | 20d | 2007-08-22 | 2007-09-18 |  |  |  |  | 0d |
| 160 | 1.3.2.3 | Analysis and Design |  | 20d | 2007-08-22 | 2007-09-18 |  |  |  |  | 0d |
| 161 | 1.3.2.4 | Implementation |  | 20d | 2007-08-22 | 2007-09-18 |  |  |  |  | 0d |
| 162 | 1.3.2.5 | Test |  | 20d | 2007-08-22 | 2007-09-18 |  |  |  |  | 0d |
| 163 | 1.3.2.6 | Environment |  | 20d | 2007-08-22 | 2007-09-18 |  |  |  |  | 0d |
| 164 | 1.3.2.7 | Configuration and Change Management |  | 20d | 2007-08-22 | 2007-09-18 |  |  |  |  | 0d |
| 165 | 1.3.2.8 | Construction 2 Complete | milestone | 0d | 2007-08-21 | 2007-08-21 |  |  |  |  | 0d |
| 166 | 1.3.3 | **Construction - Iteration 3** |  | 20d | 2007-08-22 | 2007-09-18 | 165 |  |  |  | 0d |
| 167 | 1.3.3.1 | Project Management |  | 20d | 2007-08-22 | 2007-09-18 |  |  |  |  | 0d |
| 168 | 1.3.3.2 | Requirements |  | 20d | 2007-08-22 | 2007-09-18 |  |  |  |  | 0d |
| 169 | 1.3.3.3 | Analysis and Design |  | 20d | 2007-08-22 | 2007-09-18 |  |  |  |  | 0d |
| 170 | 1.3.3.4 | Implementation |  | 20d | 2007-08-22 | 2007-09-18 |  |  |  |  | 0d |
| 171 | 1.3.3.5 | Test |  | 20d | 2007-08-22 | 2007-09-18 |  |  |  |  | 0d |
| 172 | 1.3.3.6 | Environment |  | 20d | 2007-08-22 | 2007-09-18 |  |  |  |  | 0d |
| 173 | 1.3.3.7 | Configuration and Change Management |  | 20d | 2007-08-22 | 2007-09-18 |  |  |  |  | 0d |
| 174 | 1.3.3.8 | Construction Iteration 3 Complete | milestone | 0d | 2007-09-18 | 2007-09-18 | 173 | 2007-05-17 | 2007-05-18 | 1d? | 0d |
| 175 | 1.4 | **Transition Phase** |  | 40d | 2007-09-19 | 2007-11-13 | 147 | 2007-05-18 | 2007-05-21 | 1d? | 0d |
| 176 | 1.4.1 | Transition - Iteration 1 | milestone | 20d | 2007-09-19 | 2007-10-16 |  | 2007-05-18 | 2007-05-21 | 1d? | 0d |
| 177 | 1.4.2 | Transition - Iteration 2 | milestone | 20d | 2007-10-17 | 2007-11-13 | 176 | 2007-05-18 | 2007-05-21 | 1d? | 0d |
